# LoRa_V1

Schedule from ProjectLibre, 2020-03-09 to 2021-10-01.

## Calendars

- LoRa_V1: Mon-Fri 09:00-13:00, 14:00-18:00; Sat-Sun off. Exceptions (off unless hours are given): 2020-03-22 to 2020-03-24, 2020-03-30 to 2020-03-31, 2020-04-08 to 2020-04-10, 2021-02-14 to 2021-02-16, 2021-03-23 to 2021-03-24, 2021-04-01 to 2021-04-02, 2021-05-23 to 2021-05-25, 2021-06-20 to 2021-06-21, 2021-07-08 to 2021-07-09, 2021-08-15 to 2021-08-16.

## Resources

| Resource | Rate |
| --- | --- |
| No Asignado |  |
| Luis | 7.28 |
| Damian | 10.27 |
| Adrian | 6.85 |
| Pablo | 5.99 |
| Marcelo | 10 |

## Schedule

| ID | WBS | Task | Duration | Start | Finish | Predecessors | Baseline start | Baseline finish | Resources |
| --- | --- | --- | --- | --- | --- | --- | --- | --- | --- |
| 1 | 1 | INICIO | 0d | 2020-03-09 | 2020-03-09 |  | 2020-03-09 | 2020-03-09 |  |
| 2 | 2 | **INVESTIGACION** | 60d | 2020-03-09 | 2020-06-05 |  | 2020-03-09 | 2020-06-26 |  |
| 3 | 2.1 | Productos Similares | 10d | 2020-03-09 | 2020-03-20 |  | 2020-03-09 | 2020-04-01 | Damian [50%]; Luis [25%]; Adrian [25%] |
| 4 | 2.2 | Protocolos de Comunicación | 15d | 2020-03-25 | 2020-04-17 | 3 | 2020-04-02 | 2020-05-01 | Damian [25%]; Luis [25%] |
| 5 | 2.3 | Protocolos de IoT | 25d | 2020-03-25 | 2020-05-01 | 4FS-15d | 2020-04-13 | 2020-05-15 | Luis [50%]; Damian [50%] |
| 6 | 2.4 | Factibilidad Técnica | 30d | 2020-04-27 | 2020-06-05 | 4SS, 8FF | 2020-05-18 | 2020-06-26 | Damian [50%]; Luis [25%] |
| 7 | 2.5 | Recopilación de información de proceso y lugar. | 5d | 2020-05-04 | 2020-05-08 | 5 | 2020-05-18 | 2020-06-05 | Damian [50%] |
| 8 | 2.6 | Cálculos de enlace. | 20d | 2020-05-11 | 2020-06-05 | 7 | 2020-06-08 | 2020-06-26 | Luis [50%]; Damian [50%] |
| 9 | 2.7 | Regulaciones. | 20d | 2020-05-04 | 2020-05-29 | 5 | 2020-05-18 | 2020-06-15 | Damian [25%]; Luis [25%] |
| 10 | 3 | **PLANIFICACION** | 35d | 2020-06-08 | 2020-07-24 |  | 2020-06-29 | 2020-09-04 |  |
| 11 | 3.1 | Estudio de Mercado. | 10d | 2020-06-08 | 2020-06-19 | 6 | 2020-06-29 | 2020-07-10 | Damian [25%]; Adrian [50%] |
| 12 | 3.2 | Establecimiento de requerimientos. | 20d | 2020-06-22 | 2020-07-17 | 11 | 2020-07-13 | 2020-08-07 | Adrian [50%]; Damian [50%]; Luis [25%] |
| 13 | 3.3 | Grupo de trabajo y tareas. | 5d | 2020-07-20 | 2020-07-24 | 12 | 2020-08-24 | 2020-09-04 | Damian |
| 14 | 4 | **INGENIERIA** | 155d | 2020-07-27 | 2021-03-02 |  | 2020-09-07 | 2021-04-22 |  |
| 15 | 4.1 | Diseño de Software. | 50d | 2020-07-27 | 2020-10-02 | 13 | 2020-09-07 | 2020-11-13 | Luis [50%] |
| 16 | 4.2 | Diseño de Hardware. | 40d | 2020-09-21 | 2020-11-13 | 15FS-10d | 2020-11-02 | 2020-12-25 | Damian [20%]; Luis [50%] |
| 17 | 4.3 | Esquemático. | 10d | 2020-11-16 | 2020-11-27 | 16 | 2020-12-28 | 2021-01-22 | Damian [50%] |
| 18 | 4.4 | Especificaciones técnicas. | 10d | 2020-11-30 | 2020-12-11 | 17 | 2021-01-25 | 2021-02-05 | Luis [50%]; Damian [25%]; Adrian [10%] |
| 19 | 4.5 | Listado de Materiales. | 10d | 2020-12-14 | 2020-12-25 | 18 | 2021-02-08 | 2021-02-23 | Damian [25%]; Luis [25%] |
| 20 | 4.6 | Desarrollo de protocolo de pruebas. | 5d | 2020-12-14 | 2020-12-18 | 18 | 2021-02-08 | 2021-02-12 | Damian [25%]; Luis [25%] |
| 21 | 4.7 | Pruebas básicas en protoboard. | 15d | 2020-12-21 | 2021-01-08 | 20 | 2021-02-17 | 2021-03-09 | Luis [50%] |
| 22 | 4.8 | Diseño de PCB. | 10d | 2021-01-11 | 2021-01-22 | 21 | 2021-03-10 | 2021-03-23 | Luis [25%] |
| 23 | 4.9 | Diseño de Montaje. | 10d | 2021-01-25 | 2021-02-05 | 18, 22 | 2021-03-25 | 2021-03-31 | Damian [25%]; Marcelo [25%] |
| 24 | 4.10 | Plano Topográfico Rev A. | 15d | 2021-02-08 | 2021-03-02 | 23 | 2021-04-01 | 2021-04-22 | Damian [25%]; Luis [25%] |

| ID | WBS | Task | Duration | Start | Finish | Predecessors | Baseline start | Baseline finish | Constraint | Resources |
| --- | --- | --- | --- | --- | --- | --- | --- | --- | --- | --- |
| 25 | 5 | **COMPRAS** | 149d | 2020-10-19 | 2021-05-19 |  | 2020-11-30 | 2021-06-24 |  |  |
| 26 | 5.1 | Circuito Impreso Prototipo. | 15d | 2021-01-25 | 2021-02-12 | 22 | 2021-03-25 | 2021-04-15 |  | Luis [25%] |
| 27 | 5.2 | Circuito Impreso Diseño Final. | 20d | 2021-04-22 | 2021-05-19 | 55 | 2021-05-26 | 2021-06-24 |  | Damian [25%]; Luis [25%] |
| 28 | 5.3 | Componentes Nacionales. | 15d | 2020-12-28 | 2021-01-15 | 19 | 2021-02-24 | 2021-03-09 |  | Pablo [20%] |
| 29 | 5.4 | Componentes Importados. | 45d | 2020-10-19 | 2020-12-18 | 16FS-20d | 2020-11-30 | 2021-02-23 |  | Pablo [10%]; Adrian [10%] |
| 30 | 5.5 | Gabinete. | 14d | 2021-02-08 | 2021-03-01 | 23 | 2021-04-01 | 2021-04-21 |  | Pablo [20%]; Adrian [10%] |
| 31 | 5.6 | Panel Solar. | 25d | 2021-02-08 | 2021-03-16 | 23 | 2021-04-01 | 2021-05-06 |  | Pablo [20%] |
| 32 | 5.7 | Batería. | 45d | 2021-01-25 | 2021-03-31 | 23FS-10d | 2021-03-17 | 2021-05-20 |  | Pablo [20%] |
| 33 | 5.8 | Antena. | 70d | 2020-11-16 | 2021-02-23 | 18FS-20d | 2021-01-11 | 2021-04-22 |  | Pablo [10%] |
| 34 | 5.9 | Cables para antena. | 30d | 2020-11-30 | 2021-01-08 | 19FS-20d | 2021-01-25 | 2021-04-22 |  | Pablo [10%] |
| 35 | 6 | **PROGRAMACION** | 113d | 2020-10-05 | 2021-03-12 |  | 2020-11-16 | 2021-04-21 |  |  |
| 36 | 6.1 | Adquisición de entradas. | 15d | 2020-10-05 | 2020-10-23 | 15 | 2020-11-16 | 2020-12-04 |  | Luis [25%] |
| 37 | 6.2 | Comunicación. | 10d | 2020-10-26 | 2020-11-06 | 36 | 2020-12-07 | 2020-12-18 |  | Damian [50%]; Luis [50%] |
| 38 | 6.3 | Configuración de GW. (Si se vende el GW tanto mejor) | 5d | 2020-11-09 | 2020-11-13 | 37 | 2020-12-21 | 2020-12-25 |  | Luis [25%]; Damian [25%] |
| 39 | 6.4 | Tratamiendo de los datos con NodeRed. | 28d | 2020-11-16 | 2020-12-23 | 38 | 2020-12-28 | 2021-02-03 |  | Luis [25%]; Damian [50%] |
| 40 | 6.5 | Historización en base de datos InfluxdB. | 20d | 2020-12-24 | 2021-01-20 | 39 | 2021-02-04 | 2021-02-26 |  | Luis [25%] |
| 41 | 6.6 | Visualización en Grafana. | 20d | 2021-01-21 | 2021-02-19 | 40 | 2021-03-01 | 2021-03-30 |  | Luis [25%] |
| 42 | 6.7 | Configuración de servidores locales. | 15d | 2021-02-22 | 2021-03-12 | 41 | 2021-03-31 | 2021-04-21 |  | Luis [25%] |
| 43 | 7 | **CONSTRUCCION** | 71d | 2021-02-17 | 2021-06-01 |  | 2021-04-16 | 2021-08-06 |  |  |
| 44 | 7.1 | Soldado de placa prototipo. | 10d | 2021-02-17 | 2021-03-02 | 26 | 2021-04-16 | 2021-04-29 |  | Luis [25%] |
| 45 | 7.2 | Soldado de placa diseño definitivo. | 7d | 2021-05-20 | 2021-06-01 | 27 | 2021-06-25 | 2021-08-06 | start no earlier than 2021-05-20 | Luis [25%] |
| 46 | 7.3 | Construcción de Gabinete con Panel y Antena. | 5d | 2021-03-03 | 2021-03-09 | 44 | 2021-04-30 | 2021-05-06 |  | Marcelo [50%] |
| 47 | 8 | **ENSAYOS** | 5d | 2021-03-10 | 2021-03-16 |  | 2021-05-07 | 2021-05-13 |  |  |
| 48 | 8.1 | Eléctricos/Electrónicos. | 1d | 2021-03-10 | 2021-03-10 | 46 | 2021-05-07 | 2021-05-07 |  | Damian [50%] |
| 49 | 8.2 | Mecánicos. | 1d | 2021-03-11 | 2021-03-11 | 48 | 2021-05-10 | 2021-05-10 |  | Marcelo [50%] |
| 50 | 8.3 | Comunicación. | 3d | 2021-03-12 | 2021-03-16 | 33, 34, 49 | 2021-05-11 | 2021-05-13 |  | Luis [25%] |
| 51 | 8.4 | Software. | 3d | 2021-03-12 | 2021-03-16 | 49 | 2021-05-11 | 2021-05-13 |  | Luis [50%] |

| ID | WBS | Task | Duration | Start | Finish | Predecessors | Baseline start | Baseline finish | Resources |
| --- | --- | --- | --- | --- | --- | --- | --- | --- | --- |
| 52 | 9 | **PRUEBAS DE FUNCIONAMIENTO DE PROTOTIPO.** | 57d | 2021-03-12 | 2021-06-04 |  | 2021-05-11 | 2021-06-03 |  |
| 53 | 9.1 | Configuración de programa. | 2d | 2021-03-12 | 2021-03-15 | 49 | 2021-05-11 | 2021-05-12 | Damian [25%]; Luis [25%] |
| 54 | 9.2 | Mediciones. | 15d | 2021-03-16 | 2021-04-07 | 53 | 2021-05-13 | 2021-05-19 | Luis [25%] |
| 55 | 9.3 | Validación de prototipo. | 10d | 2021-04-08 | 2021-04-21 | 54 | 2021-05-20 | 2021-05-21 | Luis [50%]; Damian [50%] |
| 56 | 9.4 | Historicos de datos. | 10d | 2021-04-22 | 2021-05-05 | 55 | 2021-05-26 | 2021-05-27 | Luis [25%] |
| 57 | 9.5 | Visualización. | 20d | 2021-05-06 | 2021-06-04 | 56 | 2021-05-28 | 2021-06-03 | Luis [25%] |
| 58 | 10 | **TESTING FINAL** | 20d | 2021-06-02 | 2021-06-30 |  | 2021-08-09 | 2021-08-17 |  |
| 59 | 10.1 | Repetición de pruebas en definitivo | 10d | 2021-06-02 | 2021-06-15 | 45 | 2021-08-09 | 2021-08-11 | Luis [50%] |
| 60 | 10.2 | Validación del sistema final | 10d | 2021-06-16 | 2021-06-30 | 59 | 2021-08-12 | 2021-08-17 | Luis [50%]; Damian [50%] |
| 61 | 11 | **DOCUMENTACION** | 65d | 2021-07-01 | 2021-10-01 |  | 2021-08-18 | 2021-10-28 |  |
| 62 | 11.1 | Manual de Usuario | 25d | 2021-07-01 | 2021-08-05 | 60 | 2021-08-18 | 2021-09-07 | Luis [25%] |
| 63 | 11.2 | Guía rápida. | 25d | 2021-08-06 | 2021-09-10 | 62 | 2021-09-08 | 2021-09-28 | Luis [25%] |
| 64 | 11.3 | Plano Topográfico y de Conexionado Definitivos | 15d | 2021-09-13 | 2021-10-01 | 63 | 2021-09-29 | 2021-10-28 | Marcelo [50%] |
| 65 | 12 | FIN | 0d | 2021-10-01 | 2021-10-01 | 64 | 2020-03-09 | 2020-03-09 |  |
