# LoRa_V1

Schedule from ProjectLibre, 2020-03-09 to 2021-10-01.

## Calendars

- LoRa_V1: Mon-Fri 09:00-13:00, 14:00-18:00; Sat-Sun off. Exceptions (off unless hours are given): 2020-03-22 to 2020-03-24, 2020-03-30 to 2020-03-31, 2020-04-08 to 2020-04-10, 2020-05-24 to 2020-05-25, 2020-07-08 to 2020-07-09, 2020-12-23 to 2020-12-25, 2020-12-30 to 2021-01-01, 2021-02-14 to 2021-02-16, 2021-03-23 to 2021-03-24, 2021-04-01 to 2021-04-02, 2021-05-23 to 2021-05-25, 2021-06-20 to 2021-06-21, 2021-07-08 to 2021-07-09, 2021-08-15 to 2021-08-16.

## Resources

| Resource | Rate |
| --- | --- |
| No Asignado |  |
| Luis | 7.28 |
| Damian | 10.27 |
| Adrian | 7.7 |
| Pablo | 5.99 |
| Marcelo | 9.42 |

## Schedule

| ID | WBS | Task | Duration | Start | Finish | Predecessors | Baseline start | Baseline finish | Resources |
| --- | --- | --- | --- | --- | --- | --- | --- | --- | --- |
| 1 | 1 | INICIO | 0d | 2020-03-09 | 2020-03-09 |  | 2020-03-09 | 2020-03-09 |  |
| 2 | 2 | **INVESTIGACION** | 60d | 2020-03-09 | 2020-06-08 |  | 2020-03-09 | 2020-06-26 |  |
| 3 | 2.1 | Productos Similares | 10d | 2020-03-09 | 2020-03-20 |  | 2020-03-09 | 2020-04-01 | Damian [50%]; Luis [25%]; Adrian [25%] |
| 4 | 2.2 | Protocolos de Comunicación | 15d | 2020-03-25 | 2020-04-17 | 3 | 2020-04-02 | 2020-05-01 | Damian [25%]; Luis [25%] |
| 5 | 2.3 | Protocolos de IoT | 25d | 2020-03-25 | 2020-05-01 | 4FS-15d | 2020-04-13 | 2020-05-15 | Luis [50%]; Damian [50%] |
| 6 | 2.4 | Factibilidad Técnica | 30d | 2020-04-27 | 2020-06-08 | 4SS, 8FF | 2020-05-18 | 2020-06-26 | Damian [50%]; Luis [25%] |
| 7 | 2.5 | Recopilación de información de proceso y lugar. | 5d | 2020-05-04 | 2020-05-08 | 5 | 2020-05-18 | 2020-06-05 | Adrian [25%]; Damian [50%] |
| 8 | 2.6 | Cálculos de enlace. | 20d | 2020-05-11 | 2020-06-08 | 7 | 2020-06-08 | 2020-06-26 | Damian [50%]; Luis [25%] |
| 9 | 2.7 | Regulaciones. | 10d | 2020-05-04 | 2020-05-15 | 5 | 2020-05-18 | 2020-06-15 | Damian [25%]; Luis [25%]; Adrian [25%] |
| 10 | 2.8 | Supervisión de tareas de Investigación | 34d | 2020-04-21 | 2020-06-08 | 3SS, 6FF |  |  | Damian [12%] |
| 11 | 3 | **PLANIFICACION** | 35d | 2020-06-09 | 2020-07-28 |  | 2020-06-29 | 2020-09-04 |  |
| 12 | 3.1 | Estudio de Mercado. | 10d | 2020-06-09 | 2020-06-22 | 6 | 2020-06-29 | 2020-07-10 | Damian [25%]; Adrian [50%] |
| 13 | 3.2 | Establecimiento de requerimientos. | 20d | 2020-06-23 | 2020-07-21 | 12 | 2020-07-13 | 2020-08-07 | Adrian [50%]; Damian [50%]; Luis [25%] |
| 14 | 3.3 | Grupo de trabajo y tareas. | 5d | 2020-07-22 | 2020-07-28 | 13 | 2020-08-24 | 2020-09-04 | Damian |
| 15 | 3.4 | Supervisión de tareas de Planificación | 35d | 2020-06-09 | 2020-07-28 | 12SS, 14FF |  |  | Damian [6%] |
| 16 | 4 | **INGENIERIA** | 175d | 2020-07-29 | 2021-04-09 |  | 2020-09-07 | 2021-04-22 |  |
| 17 | 4.1 | Diseño de Software. | 50d | 2020-07-29 | 2020-10-06 | 14 | 2020-09-07 | 2020-11-13 | Luis [50%] |
| 18 | 4.2 | Diseño de Hardware. | 40d | 2020-09-23 | 2020-11-17 | 17FS-10d | 2020-11-02 | 2020-12-25 | Damian [20%]; Luis [50%] |
| 19 | 4.3 | Esquemático. | 10d | 2020-11-18 | 2020-12-01 | 18 | 2020-12-28 | 2021-01-22 | Damian [50%] |
| 20 | 4.4 | Especificaciones técnicas. | 10d | 2020-12-02 | 2020-12-15 | 19 | 2021-01-25 | 2021-02-05 | Adrian [10%]; Damian [25%]; Luis [25%] |
| 21 | 4.5 | Listado de Materiales. | 10d | 2020-12-16 | 2021-01-04 | 20 | 2021-02-08 | 2021-02-23 | Damian [25%]; Luis [25%] |
| 22 | 4.6 | Desarrollo de protocolo de pruebas. | 5d | 2020-12-16 | 2020-12-22 | 20 | 2021-02-08 | 2021-02-12 | Damian [25%]; Luis [25%] |
| 23 | 4.7 | Pruebas básicas en protoboard. | 15d | 2020-12-23 | 2021-01-18 | 22 | 2021-02-17 | 2021-03-09 | Luis [50%] |
| 24 | 4.8 | Diseño de PCB. | 10d | 2021-01-19 | 2021-02-01 | 23 | 2021-03-10 | 2021-03-23 | Luis [25%] |
| 25 | 4.9 | Diseño de Montaje. | 10d | 2021-02-02 | 2021-02-17 | 20, 24 | 2021-03-25 | 2021-03-31 | Damian [25%]; Marcelo [25%] |
| 26 | 4.10 | Plano Topográfico Rev A. | 15d | 2021-02-18 | 2021-03-10 | 25 | 2021-04-01 | 2021-04-22 | Damian [25%]; Luis [25%] |
| 27 | 4.11 | Supervisión de tareas de Ingeniería | 175d | 2020-07-29 | 2021-04-09 | 17SS, 26FF |  |  | Damian [12%] |

| ID | WBS | Task | Duration | Start | Finish | Predecessors | Baseline start | Baseline finish | Constraint | Resources |
| --- | --- | --- | --- | --- | --- | --- | --- | --- | --- | --- |
| 28 | 5 | **COMPRAS** | 149d | 2020-10-21 | 2021-05-31 |  | 2020-11-30 | 2021-06-24 |  |  |
| 29 | 5.1 | Circuito Impreso Prototipo. | 15d | 2021-02-02 | 2021-02-24 | 24 | 2021-03-25 | 2021-04-15 |  | Luis [25%] |
| 30 | 5.2 | Circuito Impreso Diseño Final. | 20d | 2021-04-30 | 2021-05-31 | 62 | 2021-05-26 | 2021-06-24 |  | Damian [25%]; Luis [25%] |
| 31 | 5.3 | Componentes Nacionales. | 15d | 2021-01-05 | 2021-01-25 | 21 | 2021-02-24 | 2021-03-09 |  | Pablo [20%] |
| 32 | 5.4 | Componentes Importados. | 45d | 2020-10-21 | 2020-12-22 | 18FS-20d | 2020-11-30 | 2021-02-23 |  | Pablo [10%]; Adrian [10%] |
| 33 | 5.5 | Gabinete. | 14d | 2021-02-18 | 2021-03-09 | 25 | 2021-04-01 | 2021-04-21 |  | Pablo [20%]; Adrian [10%] |
| 34 | 5.6 | Panel Solar. | 25d | 2021-02-18 | 2021-03-25 | 25 | 2021-04-01 | 2021-05-06 |  | Pablo [20%] |
| 35 | 5.7 | Batería. | 45d | 2021-02-02 | 2021-04-09 | 25FS-10d | 2021-03-17 | 2021-05-20 |  | Pablo [20%] |
| 36 | 5.8 | Antena. | 70d | 2020-11-18 | 2021-03-03 | 20FS-20d | 2021-01-11 | 2021-04-22 |  | Pablo [10%] |
| 37 | 5.9 | Cables para antena. | 30d | 2020-12-02 | 2021-01-18 | 21FS-20d | 2021-01-25 | 2021-04-22 |  | Pablo [10%] |
| 38 | 5.10 | Superivisón de tareas de Compras | 149d | 2020-10-21 | 2021-05-31 | 30FF, 32SS |  |  |  | Damian [6%] |
| 39 | 6 | **PROGRAMACION** | 113d | 2020-10-07 | 2021-03-22 |  | 2020-11-16 | 2021-04-21 |  |  |
| 40 | 6.1 | Adquisición de entradas. | 15d | 2020-10-07 | 2020-10-27 | 17 | 2020-11-16 | 2020-12-04 |  | Luis [25%] |
| 41 | 6.2 | Comunicación. | 10d | 2020-10-28 | 2020-11-10 | 40 | 2020-12-07 | 2020-12-18 |  | Damian [50%]; Luis [50%] |
| 42 | 6.3 | Configuración de GW. (Si se vende el GW tanto mejor) | 5d | 2020-11-11 | 2020-11-17 | 41 | 2020-12-21 | 2020-12-25 |  | Luis [25%]; Damian [25%] |
| 43 | 6.4 | Tratamiendo de los datos con NodeRed. | 28d | 2020-11-18 | 2020-12-29 | 42 | 2020-12-28 | 2021-02-03 |  | Damian [25%]; Luis [25%] |
| 44 | 6.5 | Historización en base de datos InfluxdB. | 20d | 2020-12-30 | 2021-01-28 | 43 | 2021-02-04 | 2021-02-26 |  | Luis [25%] |
| 45 | 6.6 | Visualización en Grafana. | 20d | 2021-01-29 | 2021-03-01 | 44 | 2021-03-01 | 2021-03-30 |  | Luis [25%] |
| 46 | 6.7 | Configuración de servidores locales. | 15d | 2021-03-02 | 2021-03-22 | 45 | 2021-03-31 | 2021-04-21 |  | Luis [25%] |
| 47 | 6.8 | Supervisión en tareas de Programación | 113d | 2020-10-07 | 2021-03-22 | 40SS, 46FF |  |  |  | Damian [6%] |
| 48 | 7 | **CONSTRUCCION** | 71d | 2021-02-25 | 2021-06-09 |  | 2021-04-16 | 2021-08-06 |  |  |
| 49 | 7.1 | Soldado de placa prototipo. | 10d | 2021-02-25 | 2021-03-10 | 29 | 2021-04-16 | 2021-04-29 |  | Luis [25%] |
| 50 | 7.2 | Soldado de placa diseño definitivo. | 7d | 2021-05-20 | 2021-06-01 | 30 | 2021-06-25 | 2021-08-06 | start no earlier than 2021-05-20 | Luis [25%] |
| 51 | 7.3 | Construcción de Gabinete con Panel y Antena. | 5d | 2021-03-11 | 2021-03-17 | 49 | 2021-04-30 | 2021-05-06 |  | Marcelo [50%] |
| 52 | 7.4 | Supervisión de tareas de Construcción | 71d | 2021-02-25 | 2021-06-09 | 49SS, 50FF |  |  |  | Damian [6%] |

| ID | WBS | Task | Duration | Start | Finish | Predecessors | Baseline start | Baseline finish | Resources |
| --- | --- | --- | --- | --- | --- | --- | --- | --- | --- |
| 53 | 8 | **ENSAYOS** | 5d | 2021-03-18 | 2021-03-25 |  | 2021-05-07 | 2021-05-13 |  |
| 54 | 8.1 | Eléctricos/Electrónicos. | 1d | 2021-03-18 | 2021-03-18 | 51 | 2021-05-07 | 2021-05-07 | Damian [50%] |
| 55 | 8.2 | Mecánicos. | 1d | 2021-03-19 | 2021-03-19 | 54 | 2021-05-10 | 2021-05-10 | Marcelo [50%] |
| 56 | 8.3 | Comunicación. | 3d | 2021-03-22 | 2021-03-25 | 36, 37, 55 | 2021-05-11 | 2021-05-13 | Luis [25%] |
| 57 | 8.4 | Software. | 3d | 2021-03-22 | 2021-03-25 | 55 | 2021-05-11 | 2021-05-13 | Luis [50%] |
| 58 | 8.5 | Supervisión de tareas de Ensayos | 5d | 2021-03-18 | 2021-03-25 | 54SS, 57FF |  |  | Damian [6%] |
| 59 | 9 | **PRUEBAS DE FUNCIONAMIENTO DE PROTOTIPO.** | 57d | 2021-03-22 | 2021-06-14 |  | 2021-05-11 | 2021-06-03 |  |
| 60 | 9.1 | Configuración de programa. | 2d | 2021-03-22 | 2021-03-23 | 55 | 2021-05-11 | 2021-05-12 | Damian [25%]; Luis [25%] |
| 61 | 9.2 | Mediciones. | 15d | 2021-03-25 | 2021-04-15 | 60 | 2021-05-13 | 2021-05-19 | Luis [25%] |
| 62 | 9.3 | Validación de prototipo. | 10d | 2021-04-16 | 2021-04-29 | 61 | 2021-05-20 | 2021-05-21 | Luis [50%]; Damian [50%] |
| 63 | 9.4 | Historicos de datos. | 10d | 2021-04-30 | 2021-05-13 | 62 | 2021-05-26 | 2021-05-27 | Luis [25%] |
| 64 | 9.5 | Visualización. | 20d | 2021-05-14 | 2021-06-14 | 63 | 2021-05-28 | 2021-06-03 | Luis [25%] |
| 65 | 9.6 | Supervisión de pruebas de funcionamiento | 57d | 2021-03-22 | 2021-06-14 | 60SS, 64FF |  |  | Damian [6%] |
| 66 | 10 | **TESTING FINAL** | 20d | 2021-06-02 | 2021-06-30 |  | 2021-08-09 | 2021-08-17 |  |
| 67 | 10.1 | Repetición de pruebas en definitivo | 10d | 2021-06-02 | 2021-06-15 | 50 | 2021-08-09 | 2021-08-11 | Luis [25%] |
| 68 | 10.2 | Validación del sistema final | 10d | 2021-06-16 | 2021-06-30 | 64, 67 | 2021-08-12 | 2021-08-17 | Luis [50%]; Damian [50%] |
| 69 | 10.3 | Supervisión de tareas de Testing | 20d | 2021-06-02 | 2021-06-30 | 67SS, 68FF |  |  | Damian [6%] |
| 70 | 11 | **DOCUMENTACION** | 65d | 2021-07-01 | 2021-10-01 |  | 2021-08-18 | 2021-10-28 |  |
| 71 | 11.1 | Manual de Usuario | 25d | 2021-07-01 | 2021-08-05 | 68 | 2021-08-18 | 2021-09-07 | Luis [25%]; Damian [25%] |
| 72 | 11.2 | Guía rápida. | 25d | 2021-08-06 | 2021-09-10 | 71 | 2021-09-08 | 2021-09-28 | Luis [25%]; Damian [25%] |
| 73 | 11.3 | Plano Topográfico y de Conexionado Definitivos | 15d | 2021-09-13 | 2021-10-01 | 72 | 2021-09-29 | 2021-10-28 | Marcelo [50%] |
| 74 | 11.4 | Supervisión de Documentación | 65d | 2021-07-01 | 2021-10-01 | 71SS, 73FF |  |  | Damian [6%] |
| 75 | 12 | FIN | 0d | 2021-10-01 | 2021-10-01 | 74 | 2020-03-09 | 2020-03-09 |  |
